# Разработка и внедрение мобильного приложения в тренажерный зал «Impulse»

Schedule from MS Project, 2024-12-10 to 2026-05-19, costs in ₽.

## Calendars

- Стандартный: Mon-Fri 09:00-13:00, 14:00-18:00; Sat-Sun off. Exceptions (off unless hours are given): 2024-12-29 to 2025-01-08 (Новогодние праздники (2025)), 2025-05-01 to 2025-05-02 (Майские праздники 1), 2025-05-08 to 2025-05-09 (Майские праздники 2), 2025-06-12 to 2025-06-13 (День России), 2025-08-29 to 2026-01-30 10:00-12:00 (совещания, recurring), 2025-11-03 to 2025-11-04 (День народного единства), 2025-12-31 to 2026-01-08 (Новогодние праздники (2026)), 2026-02-23 (23 февраля), 2026-05-01 (1 мая).
- Совещания руководителей проекта: Mon-Thu off; Fri 18:15-20:15; Sat-Sun off. Exceptions (off unless hours are given): 2024-12-29 to 2025-01-08 (Новогодние праздники (2025)), 2025-05-01 to 2025-05-02 (Майские праздники 1), 2025-05-08 to 2025-05-09 (Майские праздники 2), 2025-06-12 to 2025-06-13 (День России), 2025-08-29 to 2026-01-30 09:00-11:00 (совещания, recurring), 2025-11-03 to 2025-11-04 (День народного единства), 2025-12-31 to 2026-01-08 (Новогодние праздники (2026)), 2026-02-23 (23 февраля), 2026-05-01 (1 мая).
- Установка оборудования: Mon-Tue off; Wed-Fri 10:00-13:00, 14:00-19:00; Sat-Sun off. Exceptions (off unless hours are given): 2024-12-29 to 2025-01-08 (Новогодние праздники (2025)), 2025-05-01 to 2025-05-02 (Майские праздники 1), 2025-05-08 to 2025-05-09 (Майские праздники 2), 2025-06-12 to 2025-06-13 (День России), 2025-11-03 to 2025-11-04 (День народного единства), 2025-12-31 to 2026-01-08 (Новогодние праздники (2026)), 2026-02-23 (23 февраля), 2026-05-01 (1 мая).

## Resources

| Resource | Unit | Rate |
| --- | --- | --- |
| Руководитель проекта (РП) от заказчика |  | 1875 |
| Руководитель проекта (РП) от исполнителя |  | 1875 |
| Бизнес-аналитик (БА) |  | 1250 |
| Дизайнер UI/UX |  | 875 |
| Разработчик |  | 1375 |
| Тестировщик |  | 1000 |
| Функциональный консультант |  | 625 |
| Риск-аналитик |  | 750 |
| Системный администратор |  | 625 |
| Специалист по обучению персонала тренажерного зала |  | 500 |
| Маркетолог |  | 1125 |
| Облачный сервер (backend-сервер) |  | 25 |
| Облачный сервер (сервер для базы данных) |  | 31.25 |
| Облачный сервер (backup-сервер) |  | 37.5 |
| Офис-менеджер |  | 750 |
| Специалист по установке оборудования |  | 375 |
| Канцелярские принадлежности | Лист | 150 |
| Картриджи для принтеров | Картридж | 1000 |
| Расходы на коммунальные услуги |  |  |
| Аренда помещений для офиса |  |  |
| Расходы на организацию встреч с представителями заказчика |  |  |
| Обучение сотрудников тренажерного зала |  |  |
| Лицензии на ПО |  |  |
| IDE и среды разработки |  |  |
| Рабочие станции (компьютеры) |  |  |
| Инструменты для тестирования |  |  |
| Мебель для оборудования офиса |  |  |
| Рабочие станции для тестирования (смартфоны) |  |  |

## Schedule

| ID | WBS | Task | Duration | Start | Finish | Predecessors | Total slack | Free slack | Constraint | Calendar | Resources | Work | Cost |
| --- | --- | --- | --- | --- | --- | --- | --- | --- | --- | --- | --- | --- | --- |
| 1 | 1 | **Плановое совещание руководителей проекта** | 5.5d | 2025-08-29 | 2026-01-30 |  | 3.5d |  |  | Совещания руководителей проекта |  | 24h | 52,500 |
| 2 | 1.1 | Плановое совещание руководителей проекта 1 | 2h | 2025-08-29 | 2025-08-29 |  | 8.75d |  | start no earlier than 2025-08-29 | Совещания руководителей проекта | Руководитель проекта (РП) от заказчика; Руководитель проекта (РП) от исполнителя; Расходы на организацию встреч с представителями заказчика [0.1%] | 4h | 8,750 |
| 3 | 1.2 | Плановое совещание руководителей проекта 2 | 2h | 2025-09-26 | 2025-09-26 |  | 7.75d |  | start no earlier than 2025-09-26 | Совещания руководителей проекта | Руководитель проекта (РП) от заказчика; Руководитель проекта (РП) от исполнителя; Расходы на организацию встреч с представителями заказчика [0.1%] | 4h | 8,750 |
| 4 | 1.3 | Плановое совещание руководителей проекта 3 | 2h | 2025-10-31 | 2025-10-31 |  | 6.5d |  | start no earlier than 2025-10-31 | Совещания руководителей проекта | Руководитель проекта (РП) от заказчика; Руководитель проекта (РП) от исполнителя; Расходы на организацию встреч с представителями заказчика [0.1%] | 4h | 8,750 |
| 5 | 1.4 | Плановое совещание руководителей проекта 4 | 2h | 2025-11-28 | 2025-11-28 |  | 5.5d |  | start no earlier than 2025-11-28 | Совещания руководителей проекта | Руководитель проекта (РП) от заказчика; Руководитель проекта (РП) от исполнителя; Расходы на организацию встреч с представителями заказчика [0.1%] | 4h | 8,750 |
| 6 | 1.5 | Плановое совещание руководителей проекта 5 | 2h | 2025-12-26 | 2025-12-26 |  | 4.5d |  | start no earlier than 2025-12-26 | Совещания руководителей проекта | Руководитель проекта (РП) от заказчика; Руководитель проекта (РП) от исполнителя; Расходы на организацию встреч с представителями заказчика [0.1%] | 4h | 8,750 |
| 7 | 1.6 | Плановое совещание руководителей проекта 6 | 2h | 2026-01-30 | 2026-01-30 |  | 3.5d |  | start no earlier than 2026-01-30 | Совещания руководителей проекта | Руководитель проекта (РП) от заказчика; Руководитель проекта (РП) от исполнителя; Расходы на организацию встреч с представителями заказчика [0.1%] | 4h | 8,750 |
| 8 | 2 | **Инициация проекта** | 55d | 2024-12-10 | 2025-03-06 |  | 0.12d |  |  |  |  | 873h | 2,334,375 |
| 9 | 2.1 | Формулировка целей и задач проекта | 15d | 2024-12-10 | 2025-01-09 |  | 0.12d | 0d |  |  | Руководитель проекта (РП) от заказчика; Руководитель проекта (РП) от исполнителя; Расходы на коммунальные услуги [0.1%]; Расходы на организацию встреч с представителями заказчика [0.1%]; Аренда помещений для офиса [0.1%] | 236h | 660,000 |
| 10 | 2.2 | Согласование команды проекта, ролей и ответственности членов команды, в том числе со стороны заказчика (с учетом необходимости обучение тренеров и администраторов). | 20d | 2025-01-10 | 2025-02-06 | 9 | 0.12d | 0d |  |  | Руководитель проекта (РП) от заказчика [50%]; Руководитель проекта (РП) от исполнителя [50%] | 157h | 294,375 |
| 11 | 2.3 | Разработка и утверждение устава проекта, включая определение бюджетов и сроков реализации. | 40d | 2025-01-10 | 2025-03-06 | 10SS | 0.12d | 0d | finish no earlier than 2025-03-04 |  | Бизнес-аналитик (БА) [50%]; Руководитель проекта (РП) от заказчика [50%]; Руководитель проекта (РП) от исполнителя [50%]; Расходы на организацию встреч с представителями заказчика [0.1%]; Аренда помещений для офиса [0.1%]; Расходы на коммунальные услуги [0.1%] | 480h | 1,380,000 |
| 12 | 3 | Сбор и анализ требований от заказчика | 15d | 2025-03-07 | 2025-03-27 | 10, 11 | 0.12d | 0d |  |  | Бизнес-аналитик (БА); Функциональный консультант; Аренда помещений для офиса [0.1%]; Расходы на коммунальные услуги [0.1%] | 240h | 367,500 |
| 13 | 4 | Разработка технического задания с учетом необходимости авторизации пользователей (для каждого вида пользователей тренажерного зала) | 15d | 2025-03-28 | 2025-04-17 | 12 | 0.12d | 0d |  |  | Бизнес-аналитик (БА); Аренда помещений для офиса [0.1%]; Расходы на коммунальные услуги [0.1%] | 120h | 292,500 |
| 14 | 5 | **Анализ и планирование проекта** | 17d | 2025-04-18 | 2025-05-16 |  | 0.12d |  |  |  |  | 328h | 628,500 |
| 15 | 5.1 | Создание плана проекта, включая декомпозицию задач и контрольные точки | 10d | 2025-04-18 | 2025-05-05 | 13 | 0.12d | 0d |  |  | Аренда помещений для офиса [0.1%]; Расходы на коммунальные услуги [0.1%]; Бизнес-аналитик (БА); Руководитель проекта (РП) от исполнителя | 160h | 345,000 |
| 16 | 5.2 | Анализ рисков и разработка стратегии их минимизации | 7d | 2025-05-06 | 2025-05-16 | 15 | 0.12d | 0d |  |  | Бизнес-аналитик (БА); Риск-аналитик; Руководитель проекта (РП) от исполнителя; Аренда помещений для офиса [0.1%]; Расходы на коммунальные услуги [0.1%] | 168h | 283,500 |
| 17 | 6 | **Техническая подготовка инфраструктуры** | 32d | 2025-05-19 | 2025-07-03 |  | 0d |  |  |  |  | 192h | 2,628,750 |
| 18 | 6.1 | Выбор поставщиков и приобретение оборудования и технических средств | 14d | 2025-05-19 | 2025-06-05 | 16 | 0.12d | 0d |  |  | Аренда помещений для офиса [0.1%]; Офис-менеджер; Расходы на коммунальные услуги [0.1%] | 112h | 217,000 |
| 19 | 6.2 | Инсталляция оборудования | 5d | 2025-06-11 | 2025-06-26 | 18FS+2d | 0.12d |  |  | Установка оборудования | Специалист по установке оборудования; Аренда помещений для офиса [0.1%]; Расходы на коммунальные услуги [0.1%]; Мебель для оборудования офиса [0.1%]; Рабочие станции (компьютеры) [0.1%]; Рабочие станции для тестирования (смартфоны) [0.1%]; Канцелярские принадлежности [25 Лист]; Картриджи для принтеров [3 Картридж]; IDE и среды разработки [0.1%]; Инструменты для тестирования [0.1%]; Лицензии на ПО [0.1%] | 40h | 2,334,250 |
| 20 | 6.3 | Оценка параметров оборудования для обеспечения соответствия проектным требованиям | 5d | 2025-06-27 | 2025-07-03 | 19 | 0d |  |  |  | Аренда помещений для офиса [0.1%]; Офис-менеджер; Расходы на коммунальные услуги [0.1%] | 40h | 77,500 |
| 21 | 7 | **Разработка дизайна мобильного приложения** | 26d | 2025-07-04 | 2025-08-08 |  | 0d |  |  |  |  | 308h | 600,000 |
| 22 | 7.1 | Разработка прототипов пользовательского интерфейса (UI/UX). | 15d | 2025-07-04 | 2025-07-24 | 20 | 0d |  |  |  | Дизайнер UI/UX; Аренда помещений для офиса [0.1%]; Расходы на коммунальные услуги [0.1%] | 120h | 247,500 |
| 23 | 7.2 | Проведение тестирования прототипов на удобство использования с привлечением специалиста по обучению персонала | 5d | 2025-07-25 | 2025-08-01 | 22 | 0d |  |  |  | Аренда помещений для офиса [0.1%]; Дизайнер UI/UX; Расходы на коммунальные услуги [0.1%]; Специалист по обучению персонала тренажерного зала | 80h | 102,500 |
| 24 | 7.3 | Утверждение дизайна заказчиком | 5d | 2025-08-04 | 2025-08-08 | 23 | 0d |  |  |  | Руководитель проекта (РП) от заказчика; Аренда помещений для офиса [0.1%]; Расходы на коммунальные услуги [0.1%]; Бизнес-аналитик (БА); Руководитель проекта (РП) от исполнителя; Расходы на организацию встреч с представителями заказчика [0.1%] | 108h | 250,000 |

| ID | WBS | Task | Duration | Start | Finish | Predecessors | Total slack | Free slack | Constraint | Resources | Work | Cost |
| --- | --- | --- | --- | --- | --- | --- | --- | --- | --- | --- | --- | --- |
| 25 | 8 | **Разработка мобильного приложения** | 60d | 2025-08-11 | 2025-11-07 |  | 0d |  |  |  | 1360h | 1,156,250 |
| 26 | 8.1 | Реализация модулей приложения для клиентов, тренеров и администрации (front-end) | 40d | 2025-08-11 | 2025-10-07 | 24 | 0d |  |  | Разработчик [50%] | 160h | 220,000 |
| 27 | 8.2 | Реализация модулей приложения для клиентов, тренеров и администрации (back-end) | 50d | 2025-08-11 | 2025-10-21 | 26SS | 0d |  |  | Разработчик [50%]; Аренда помещений для офиса [0.1%]; Расходы на коммунальные услуги [0.1%]; Облачный сервер (backend-сервер); Облачный сервер (backup-сервер); Облачный сервер (сервер для базы данных) | 800h | 768,750 |
| 28 | 8.3 | Интеграция приложения с CRM-системой, платежными системами и приложениями календаря | 10d | 2025-10-21 | 2025-11-07 | 27, 26 | 0d |  |  | Разработчик; Системный администратор; Аренда помещений для офиса [0.1%]; Облачный сервер (backend-сервер); Облачный сервер (backup-сервер); Облачный сервер (сервер для базы данных); Расходы на коммунальные услуги [0.1%] | 400h | 167,500 |
| 29 | 9 | Настройка и обеспечение безопасности данных в соответствии законодательным требованиями | 10d | 2025-11-07 | 2025-11-21 | 28 | 0d |  |  | Разработчик; Системный администратор; Аренда помещений для офиса [0.1%]; Облачный сервер (backend-сервер); Облачный сервер (backup-сервер); Облачный сервер (сервер для базы данных); Расходы на коммунальные услуги [0.1%] | 400h | 167,500 |
| 30 | 10 | **Тестирование мобильного приложения** | 25d | 2025-11-21 | 2025-12-29 |  | 0d |  |  |  | 800h | 532,500 |
| 31 | 10.1 | Функциональное тестирование (проверка всех заявленных для клиента, тренера и администратора функций) | 20d | 2025-11-21 | 2025-12-19 | 29 | 0d |  |  | Системный администратор [50%]; Тестировщик [50%]; Аренда помещений для офиса [0.1%]; Облачный сервер (backend-сервер) [50%]; Облачный сервер (backup-сервер) [50%]; Облачный сервер (сервер для базы данных) [50%]; Расходы на коммунальные услуги [0.1%] | 400h | 327,500 |
| 32 | 10.2 | Нагрузочное тестирование для оценки производительности при высоких объемах пользователей | 10d | 2025-11-21 | 2025-12-05 | 31SS | 10d |  |  | Облачный сервер (backend-сервер) [50%]; Облачный сервер (backup-сервер) [50%]; Облачный сервер (сервер для базы данных) [50%]; Тестировщик [50%] | 160h | 43,750 |
| 33 | 10.3 | Тестирование пользовательского опыта (UX) с привлечением специалиста по обучению со стороны заказчика | 5d | 2025-12-22 | 2025-12-29 | 31, 32 | 0d |  |  | Бизнес-аналитик (БА); Тестировщик; Специалист по обучению персонала тренажерного зала; Облачный сервер (backend-сервер); Облачный сервер (backup-сервер); Облачный сервер (сервер для базы данных); Аренда помещений для офиса [0.1%]; Расходы на коммунальные услуги [0.1%] | 240h | 161,250 |
| 34 | 11 | **Обучение и подготовка к запуску** | 16d | 2025-12-29 | 2026-01-29 |  | 0d |  |  |  | 128h | 426,000 |
| 35 | 11.1 | Обучение сотрудников заказчика (тренеров и администраторов) работе с приложением | 6d | 2025-12-29 | 2026-01-15 | 33 | 0d |  |  | Специалист по обучению персонала тренажерного зала; Аренда помещений для офиса [0.1%]; Обучение сотрудников тренажерного зала [0.1%]; Расходы на коммунальные услуги [0.1%] | 48h | 231,000 |
| 36 | 11.2 | Подготовка инструкции и технической документации | 10d | 2026-01-15 | 2026-01-29 | 35 | 0d |  | start no earlier than 2025-10-28 | Аренда помещений для офиса [0.1%]; Бизнес-аналитик (БА); Расходы на коммунальные услуги [0.1%] | 80h | 195,000 |
| 37 | 12 | **Внедрение мобильного приложения** | 30d | 2026-01-29 | 2026-03-16 |  | 0d |  |  |  | 600h | 657,500 |
| 38 | 12.1 | Проведение маркетинговой кампании для информирования клиентов о новом инструменте | 30d | 2026-01-29 | 2026-03-16 | 36 | 0d |  |  | Маркетолог [50%]; Аренда помещений для офиса [0.1%]; Расходы на коммунальные услуги [0.1%] | 120h | 420,000 |
| 39 | 12.2 | Развертывание приложения в AppStore и GooglePlay | 10d | 2026-01-29 | 2026-02-13 | 38SS | 10d | 0d |  | Маркетолог [50%]; Разработчик [50%] | 80h | 100,000 |
| 40 | 12.3 | Мониторинг первых дней работы приложения | 10d | 2026-02-13 | 2026-03-02 | 39 | 10d |  |  | Системный администратор; Тестировщик; Облачный сервер (backend-сервер); Облачный сервер (backup-сервер); Облачный сервер (сервер для базы данных) | 400h | 137,500 |
| 41 | 13 | **Сопровождение и завершение проекта** | 45d | 2026-03-16 | 2026-05-19 |  | 0d |  |  |  | 838h | 1,419,500 |
| 42 | 13.1 | Сбор обратной связи от пользователей (клиентов, тренеров, администраторов) | 40d | 2026-03-16 | 2026-05-12 | 40, 38 | 0d |  |  | Аренда помещений для офиса [0.1%]; Расходы на коммунальные услуги [0.1%]; Бизнес-аналитик (БА) [50%] | 160h | 580,000 |
| 43 | 13.2 | Внесение корректировок на основе отзывов | 30d | 2026-03-30 | 2026-05-12 | 42FF | 0d |  |  | Бизнес-аналитик (БА) [50%]; Дизайнер UI/UX [50%]; Разработчик [50%]; Системный администратор [50%]; Тестировщик [50%] | 600h | 615,000 |
| 44 | 13.3 | Подготовка итогового отчёта о проекте | 5d | 2026-05-12 | 2026-05-19 | 43 | 0d |  |  | Руководитель проекта (РП) от заказчика; Руководитель проекта (РП) от исполнителя; Аренда помещений для офиса [0.1%]; Расходы на коммунальные услуги [0.1%]; Расходы на организацию встреч с представителями заказчика [0.1%]; Канцелярские принадлежности [25 Лист]; Картриджи для принтеров [2 Картридж] | 78h | 224,500 |
